# 防火墙替换项目整体周期

Schedule from a web Gantt chart, 2025-08-15 to 2025-11-08.
Every day is a working day

## Schedule

| ID | WBS | Task | Duration | Start | Finish | Predecessors | Status |
| --- | --- | --- | --- | --- | --- | --- | --- |
| 2 | 1 | **调研阶段** | 4d | 2025-08-18 | 2025-08-21 |  |  |
| 3 | 1.1 | 调研工作启动会 | 1d | 2025-08-18 | 2025-08-18 |  |  |
| 4 | 1.2 | IDC网络环境调研 | 1d | 2025-08-18 | 2025-08-18 |  |  |
| 5 | 1.3 | 工厂网络环境调研 | 1d | 2025-08-19 | 2025-08-19 | 4 | waiting |
| 6 | 1.4 | 调研资料整理 | 1d | 2025-08-20 | 2025-08-20 | 5 | waiting |
| 7 | 1.5 | 调研工作确认会 | 1d | 2025-08-21 | 2025-08-21 | 6 | waiting |
| 8 | 2 | **方案设计阶段** | 21d | 2025-08-22 | 2025-09-11 |  |  |
| 9 | 2.1 | 方案设计工作启动会 | 1d | 2025-08-22 | 2025-08-22 |  |  |
| 10 | 2.2 | IDC防火墙网络优化设计 | 3d | 2025-08-22 | 2025-08-24 |  |  |
| 11 | 2.3 | 安全策略标准制定 | 3d | 2025-08-25 | 2025-08-27 | 10 | waiting |
| 12 | 2.4 | IDC安全策略优化设计 | 14d | 2025-08-28 | 2025-09-10 | 11 | waiting |
| 13 | 2.5 | 工厂/办公室防火墙割接优化设计（架构+策略） | 14d | 2025-08-28 | 2025-09-10 | 11 | waiting |
| 14 | 2.6 | 方案设计工作确认会 | 1d | 2025-09-11 | 2025-09-11 | 13 | waiting |
| 15 | 3 | **项目设计阶段** | 21d | 2025-09-12 | 2025-10-02 |  |  |
| 16 | 3.1 | 项目设计启动会 | 1d | 2025-09-12 | 2025-09-12 | 14 | waiting |
| 17 | 3.2 | SDC上海防火墙clish脚本配置设计与测试 | 2d | 2025-09-13 | 2025-09-14 | 16 | waiting |
| 18 | 3.3 | CHC上海来福士中心防火墙脚本配置设计与测试 | 2d | 2025-09-15 | 2025-09-16 | 17 | waiting |
| 19 | 3.4 | ABAC上海前滩办公室防火墙脚本配置设计与测试 | 2d | 2025-09-17 | 2025-09-18 | 18 | waiting |
| 20 | 3.5 | ABAC江苏贸易公司（新如东）防火墙脚本配置设计与测试 | 1d | 2025-09-19 | 2025-09-19 | 19 | waiting |
| 21 | 3.6 | ABAC如东工厂防火墙脚本配置设计与测试 | 1d | 2025-09-20 | 2025-09-20 | 20 | waiting |
| 22 | 3.7 | ABSC哈尔滨办公室防火墙脚本配置设计与测试 | 1d | 2025-09-21 | 2025-09-21 | 21 | waiting |
| 23 | 3.8 | ABMC烟台工厂防火墙脚本配置设计与测试 | 1d | 2025-09-22 | 2025-09-22 | 22 | waiting |
| 24 | 3.9 | ABAC江西工厂防火墙脚本配置设计与测试 | 1d | 2025-09-23 | 2025-09-23 | 23 | waiting |
| 25 | 3.10 | ABAC安徽工厂防火墙脚本配置设计与测试 | 1d | 2025-09-24 | 2025-09-24 | 24 | waiting |
| 26 | 3.11 | ABAC驻马店工厂防火墙脚本配置设计与测试 | 1d | 2025-09-25 | 2025-09-25 | 25 | waiting |
| 27 | 3.12 | ABAC新乡工厂防火墙脚本配置设计与测试 | 1d | 2025-09-26 | 2025-09-26 | 26 | waiting |
| 28 | 3.13 | ABAC陕西工厂防火墙脚本配置设计与测试 | 1d | 2025-09-27 | 2025-09-27 | 27 | waiting |
| 29 | 3.14 | ABAC天津工厂防火墙脚本配置设计与测试 | 1d | 2025-09-28 | 2025-09-28 | 28 | waiting |
| 30 | 3.15 | ABAC鞍山工厂防火墙脚本配置设计与测试 | 1d | 2025-09-29 | 2025-09-29 | 29 | waiting |
| 31 | 3.16 | ABAC哈尔滨办公室防火墙脚本配置设计与测试 | 1d | 2025-09-30 | 2025-09-30 | 30 | waiting |
| 32 | 3.17 | ABAC哈尔滨工厂防火墙脚本配置设计与测试 | 1d | 2025-10-01 | 2025-10-01 | 31 | waiting |
| 33 | 3.18 | 项目设计工作确认会 | 1d | 2025-10-02 | 2025-10-02 | 32 | waiting |

| ID | WBS | Task | Duration | Start | Finish | Predecessors | Status |
| --- | --- | --- | --- | --- | --- | --- | --- |
| 34 | 4 | **项目交付阶段** | 83d | 2025-08-15 | 2025-11-05 |  |  |
| 35 | 4.1 | 项目交付阶段启动会 | 1d | 2025-09-19 | 2025-09-19 | 19 | waiting |
| 36 | 4.2 | SMS服务器安装+调试（远程） | 1d | 2025-08-15 | 2025-08-15 |  |  |
| 37 | 4.3 | **SDC上海防火墙设备上架入网调试（现场）** | 21d | 2025-09-19 | 2025-10-09 |  |  |
| 38 | 4.3.1 | 设备上架+初始化 | 1d | 2025-09-19 | 2025-09-19 | 19 | waiting |
| 39 | 4.3.2 | 设备配置 | 2d | 2025-09-20 | 2025-09-21 | 38 | waiting |
| 40 | 4.3.3 | 配置检查+结果汇报，割接条件判断：是否具备割接条件 | 1d | 2025-09-22 | 2025-09-22 | 39 | waiting |
| 41 | 4.3.4 | 割接前准备：客户下发割接公告，联系相应业务接口人。 | 1d | 2025-09-23 | 2025-09-23 | 40 | waiting |
| 42 | 4.3.5 | 割接前准备：制定割接方案（割接前后的测试方案+割接步骤+回退方案） | 7d | 2025-09-23 | 2025-09-29 | 40 | waiting |
| 43 | 4.3.6 | SDC业务割接 | 1d | 2025-09-23 | 2025-09-23 |  |  |
| 44 | 4.3.7 | 割接后复盘会 | 1d | 2025-09-23 | 2025-09-23 |  |  |
| 45 | 4.4 | **CHC上海来福士中心防火墙替换（现场）** | 2d | 2025-09-23 | 2025-09-24 |  |  |
| 46 | 4.4.1 | 设备配置+割接 | 1d | 2025-09-23 | 2025-09-23 | 40 | waiting |
| 47 | 4.4.2 | 网络保障 | 1d | 2025-09-24 | 2025-09-24 | 46 | waiting |
| 48 | 4.5 | **ABAC上海前滩办公室防火墙替换（现场）** | 3d | 2025-09-25 | 2025-09-27 |  |  |
| 49 | 4.5.1 | 设备配置+割接 | 1d | 2025-09-25 | 2025-09-25 | 47 | waiting |
| 50 | 4.5.2 | 网络保障 | 1d | 2025-09-26 | 2025-09-26 | 49 | waiting |
| 51 | 4.5.3 | 差旅 | 1d | 2025-09-27 | 2025-09-27 | 50 | waiting |
| 52 | 4.6 | **ABAC江苏贸易公司（新如东）防火墙替换（远程）** | 2d | 2025-09-28 | 2025-09-29 |  |  |
| 53 | 4.6.1 | 设备配置+割接 | 1d | 2025-09-28 | 2025-09-28 | 51 | waiting |
| 54 | 4.6.2 | 网络保障 | 1d | 2025-09-29 | 2025-09-29 | 53 | waiting |
| 55 | 4.7 | **ABAC如东工厂防火墙替换（远程）** | 2d | 2025-09-30 | 2025-10-01 |  |  |
| 56 | 4.7.1 | 设备配置+割接 | 1d | 2025-09-30 | 2025-09-30 | 54 | waiting |
| 57 | 4.7.2 | 网络保障 | 1d | 2025-10-01 | 2025-10-01 | 56 | waiting |

| ID | WBS | Task | Duration | Start | Finish | Predecessors | Status |
| --- | --- | --- | --- | --- | --- | --- | --- |
| 58 | 4.8 | **ABSC哈尔滨办公室防火墙替换（远程）** | 2d | 2025-10-02 | 2025-10-03 |  |  |
| 59 | 4.8.1 | 设备配置+割接 | 1d | 2025-10-02 | 2025-10-02 | 57 | waiting |
| 60 | 4.8.2 | 网络保障 | 1d | 2025-10-03 | 2025-10-03 | 59 | waiting |
| 61 | 4.9 | **ABMC烟台工厂防火墙替换（远程）** | 2d | 2025-10-04 | 2025-10-05 |  |  |
| 62 | 4.9.1 | 设备配置+割接 | 1d | 2025-10-04 | 2025-10-04 | 60 | waiting |
| 63 | 4.9.2 | 网络保障 | 1d | 2025-10-05 | 2025-10-05 | 62 | waiting |
| 64 | 4.10 | **ABAC江西工厂防火墙替换（现场）** | 3d | 2025-10-06 | 2025-10-08 |  |  |
| 65 | 4.10.1 | 差旅 | 1d | 2025-10-06 | 2025-10-06 | 63 | waiting |
| 66 | 4.10.2 | 设备配置+割接 | 1d | 2025-10-07 | 2025-10-07 | 65 | waiting |
| 67 | 4.10.3 | 网络保障 | 1d | 2025-10-08 | 2025-10-08 | 66 | waiting |
| 68 | 4.11 | **ABAC安徽工厂防火墙替换（现场）** | 3d | 2025-10-09 | 2025-10-11 |  |  |
| 69 | 4.11.1 | 差旅 | 1d | 2025-10-09 | 2025-10-09 | 67 | waiting |
| 70 | 4.11.2 | 设备配置+割接 | 1d | 2025-10-10 | 2025-10-10 | 69 | waiting |
| 71 | 4.11.3 | 网络保障 | 1d | 2025-10-11 | 2025-10-11 | 70 | waiting |
| 72 | 4.12 | **ABAC驻马店工厂防火墙替换（现场）** | 3d | 2025-10-12 | 2025-10-14 |  |  |
| 73 | 4.12.1 | 差旅 | 1d | 2025-10-12 | 2025-10-12 | 71 | waiting |
| 74 | 4.12.2 | 设备配置+割接 | 1d | 2025-10-13 | 2025-10-13 | 73 | waiting |
| 75 | 4.12.3 | 网络保障 | 1d | 2025-10-14 | 2025-10-14 | 74 | waiting |
| 76 | 4.13 | **ABAC新乡工厂防火墙替换（现场）** | 3d | 2025-10-15 | 2025-10-17 |  |  |
| 77 | 4.13.1 | 差旅 | 1d | 2025-10-15 | 2025-10-15 | 75 | waiting |
| 78 | 4.13.2 | 设备配置+割接 | 1d | 2025-10-16 | 2025-10-16 | 77 | waiting |
| 79 | 4.13.3 | 网络保障 | 1d | 2025-10-17 | 2025-10-17 | 78 | waiting |
| 80 | 4.14 | **ABAC陕西工厂防火墙替换（现场）** | 3d | 2025-10-18 | 2025-10-20 |  |  |
| 81 | 4.14.1 | 差旅 | 1d | 2025-10-18 | 2025-10-18 | 79 | waiting |
| 82 | 4.14.2 | 设备配置+割接 | 1d | 2025-10-19 | 2025-10-19 | 81 | waiting |
| 83 | 4.14.3 | 网络保障 | 1d | 2025-10-20 | 2025-10-20 | 82 | waiting |

| ID | WBS | Task | Duration | Start | Finish | Predecessors | Status |
| --- | --- | --- | --- | --- | --- | --- | --- |
| 84 | 4.15 | **ABAC天津工厂防火墙替换（现场）** | 4d | 2025-10-21 | 2025-10-24 |  |  |
| 85 | 4.15.1 | 差旅 | 1d | 2025-10-21 | 2025-10-21 | 83 | waiting |
| 86 | 4.15.2 | 设备配置+割接 | 1d | 2025-10-22 | 2025-10-22 | 85 | waiting |
| 87 | 4.15.3 | SDWAN优化动作 | 1d | 2025-10-23 | 2025-10-23 | 86 | waiting |
| 88 | 4.15.4 | 网络保障 | 1d | 2025-10-24 | 2025-10-24 | 87 | waiting |
| 89 | 4.16 | **ABAC鞍山工厂防火墙替换（现场）** | 4d | 2025-10-25 | 2025-10-28 |  |  |
| 90 | 4.16.1 | 差旅 | 1d | 2025-10-25 | 2025-10-25 | 88 | waiting |
| 91 | 4.16.2 | 设备配置+割接 | 1d | 2025-10-26 | 2025-10-26 | 90 | waiting |
| 92 | 4.16.3 | SDWAN优化动作 | 1d | 2025-10-27 | 2025-10-27 | 91 | waiting |
| 93 | 4.16.4 | 网络保障 | 1d | 2025-10-28 | 2025-10-28 | 92 | waiting |
| 94 | 4.17 | **ABAC哈尔滨办公室防火墙替换（现场）** | 3d | 2025-10-29 | 2025-10-31 |  |  |
| 95 | 4.17.1 | 差旅 | 1d | 2025-10-29 | 2025-10-29 | 93 | waiting |
| 96 | 4.17.2 | 设备配置+割接 | 1d | 2025-10-30 | 2025-10-30 | 95 | waiting |
| 97 | 4.17.3 | 网络保障 | 1d | 2025-10-31 | 2025-10-31 | 96 | waiting |
| 98 | 4.18 | **ABAC哈尔滨工厂防火墙替换（现场）** | 4d | 2025-11-01 | 2025-11-04 |  |  |
| 99 | 4.18.1 | 差旅 | 1d | 2025-11-01 | 2025-11-01 | 97 | waiting |
| 100 | 4.18.2 | 设备配置+割接 | 1d | 2025-11-02 | 2025-11-02 | 99 | waiting |
| 101 | 4.18.3 | SDWAN优化动作 | 1d | 2025-11-03 | 2025-11-03 | 100 | waiting |
| 102 | 4.18.4 | 网络保障 | 1d | 2025-11-04 | 2025-11-04 | 101 | waiting |
| 103 | 4.19 | 项目交付阶段总结会 | 1d | 2025-11-05 | 2025-11-05 | 102 | waiting |
| 104 | 5 | **项目验收阶段** | 3d | 2025-11-06 | 2025-11-08 |  |  |
| 105 | 5.1 | 项目验收工作启动会 | 1d | 2025-11-06 | 2025-11-06 | 103 | waiting |
| 106 | 5.2 | 项目验收文档整理 | 1d | 2025-11-07 | 2025-11-07 | 105 | waiting |
| 107 | 5.3 | 项目验收 | 1d | 2025-11-08 | 2025-11-08 | 106 | waiting |
